# H项目1

How a schedule from MS Project changed from version to version. A marks actual dates.

## Version 1 (saved 2016-04-20, file H-项目计划v1.2.mpp)

Note of the change: Signed-off-by: libcanyoung <gaiyangfan@163.com>

| ID | WBS | Task | Duration | Start | Finish | Predecessors | Complete |
| --- | --- | --- | --- | --- | --- | --- | --- |
| 1 | 1 | **软件需求分析** | 7d | 2016-03-15 A | 2016-03-23 A |  | 100% |
| 2 |  | 开会确定目标及需求 | 2d | 2016-03-15 A | 2016-03-16 A |  | 100% |
| 3 |  | 资料收集 | 2d | 2016-03-17 A | 2016-03-18 A | 2 | 100% |
| 4 |  | 撰写需求说明书 | 1d | 2016-03-17 A | 2016-03-17 A | 2 | 100% |
| 5 |  | 讨论，总结及完善 | 1d | 2016-03-21 A | 2016-03-23 A |  | 100% |
| 6 | 2 | **软件需求评审** | 13d | 2016-03-21 A | 2016-04-06 |  | 100% |
| 7 |  | 准备软件评审 | 3d | 2016-03-21 A | 2016-03-23 A |  | 100% |
| 8 |  | 参与评审 | 2d | 2016-03-24 A | 2016-03-25 A | 7 | 100% |
| 9 |  | 需求互评 | 3d | 2016-04-02 A | 2016-04-05 A |  | 100% |
| 10 |  | 撰写报告 | 1d | 2016-03-28 A | 2016-03-29 A | 8 | 100% |
| 12 | 3 | **软件需求复评审** | 9d | 2016-04-07 A | 2016-04-15 A |  | 100% |
| 13 |  | 开会讨论，根据评审进行改正 | 7d | 2016-04-07 A | 2016-04-13 A |  | 100% |
| 14 |  | 撰写报告 | 2d | 2016-04-14 A | 2016-04-15 A | 13 | 100% |
| 16 | 4 | **工作进度计划** | 2d | 2016-04-16 A | 2016-04-17 A |  | 100% |
| 17 |  | 进度检查与分析 | 1d | 2016-04-16 A | 2016-04-16 A | 14 | 100% |
| 18 |  | 任务量统计 | 1d | 2016-04-16 A | 2016-04-16 A |  | 100% |
| 19 |  | 调整分析报告 | 1d | 2016-04-17 A | 2016-04-17 A | 18 | 100% |
| 21 | 5 | **改进设计方案** | 4d | 2016-04-17 | 2016-04-20 A |  | 100% |
| 22 |  | 讨论并调整需求 | 1d | 2016-04-19 A | 2016-04-19 A | 19 | 100% |
| 23 |  | 方案设计 | 1d | 2016-04-20 A | 2016-04-20 A | 22 | 100% |
| 24 |  | ppt设计 | 1d | 2016-04-20 A | 2016-04-20 A |  | 100% |
| 26 | 6 | **基本框架搭建** | 4d | 2016-04-17 A | 2016-04-20 A |  | 100% |
| 27 |  | 代码阅读 | 1d | 2016-04-17 A | 2016-04-17 A |  | 100% |
| 28 |  | 文本输入 | 1d | 2016-04-18 A | 2016-04-18 A | 27 | 100% |
| 29 |  | 文本检索 | 2d | 2016-04-19 A | 2016-04-20 A | 28 | 100% |
| 31 | 7 | **扩展功能实现** | 8d | 2016-04-21 A | 2016-04-28 |  | 38% |
| 32 |  | 中文分词 | 4d | 2016-04-21 A | 2016-04-24 A |  | 100% |
| 33 |  | 图像检索 | 4d | 2016-04-21 A | 2016-04-24 |  | 50% |
| 34 |  | 非结构化数据管理 | 4d | 2016-04-25 | 2016-04-28 |  |  |
| 35 |  | 数据挖掘 | 4d | 2016-04-25 | 2016-04-28 |  |  |
| 37 | 8 | **性能优化** | 7d | 2016-04-29 | 2016-05-05 |  |  |
| 38 |  | 讨论，确定具体实施方案 | 3d | 2016-04-29 | 2016-05-01 |  |  |
| 39 |  | 编码 | 4d | 2016-05-02 | 2016-05-05 | 38 |  |
| 41 | 9 | **软件测试分析** | 7d | 2016-05-06 | 2016-05-12 |  |  |
| 42 |  | 学习测试工具 | 2d | 2016-05-07 | 2016-05-08 |  |  |
| 43 |  | 测试需求分析 | 1d | 2016-05-10 | 2016-05-10 |  |  |
| 44 |  | 确定测试用例 | 2d | 2016-05-11 | 2016-05-12 | 43 |  |
| 46 | 10 | **软件测试复评审** | 7d | 2016-05-13 | 2016-05-19 |  |  |
| 47 |  | 参与评审 | 1d | 2016-05-13 | 2016-05-13 |  |  |
| 48 |  | 测试需求和测试用例评审 | 2d | 2016-05-16 | 2016-05-17 |  |  |
| 49 |  | 测试结果分析与报告 | 2d | 2016-05-18 | 2016-05-19 | 48 |  |
| 51 | 11 | **软件演示与测评** | 7d | 2016-05-19 | 2016-05-25 |  |  |
| 52 |  | 准备文档及ppt | 2d | 2016-05-20 | 2016-05-21 |  |  |
| 53 |  | 软件终测 | 2d | 2016-05-23 | 2016-05-24 |  |  |
| 54 |  | 软件演示 | 1d | 2016-05-24 | 2016-05-24 |  |  |
| 55 |  | 软件讲解 | 1d | 2016-05-25 | 2016-05-25 |  |  |
| 57 | 12 | **综合实验分析** | 6d | 2016-05-26 | 2016-05-31 |  |  |
| 58 |  | 功能需求分析 | 3d | 2016-05-26 | 2016-05-28 |  |  |
| 59 |  | 完成文档 | 1d | 2016-05-31 | 2016-05-31 |  |  |
| 61 | 13 | **综合实验总结** | 6d | 2016-06-01 | 2016-06-06 |  |  |
| 62 |  | 问题报告撰写 | 1d | 2016-06-01 | 2016-06-01 |  |  |
| 63 |  | 需求文档撰写 | 1d | 2016-06-02 | 2016-06-02 |  |  |
| 64 |  | 改进计划方案撰写 | 1d | 2016-06-03 | 2016-06-03 |  |  |
| 65 |  | 总结报告 | 1d | 2016-06-06 | 2016-06-06 |  |  |

## Version 2 (saved 2016-04-28, file H-项目计划v1.2.mpp)

Note of the change: Signed-off-by: libcanyoung <gaiyangfan@163.com>

Last finish stays 2016-06-06. Complete tasks 20 → 21.

Changed:

| ID | Task | Finish | Complete | Other |
| --- | --- | --- | --- | --- |
| 17 | 进度检查与分析 |  |  | resources 滕延林; 杨帆; 周晓懿 → 滕延林; 杨帆; 刘宏宇 |
| 19 | 调整分析报告 |  |  | resources 刘宏宇; 杨帆; 周晓懿 → 刘宏宇; 杨帆 |
| 22 | 讨论并调整需求 |  |  | resources 刘宏宇; 杨帆; 周晓懿 → 刘宏宇; 杨帆 |
| 23 | 方案设计 |  |  | resources 周晓懿; 杨帆 → 刘宏宇; 杨帆 |
| 31 | **扩展功能实现** |  | 38% → 50% |  |
| 33 | 图像检索 | 2016-04-24 A | 50% → 100% | resources 滕延林; 刘宏宇; 周晓懿 → 滕延林; 刘宏宇 |
| 38 | 讨论，确定具体实施方案 |  |  | resources 顾泽鹏; 滕延林; 杨帆; 周晓懿 → 顾泽鹏; 滕延林; 杨帆; 刘宏宇 |

## Version 3 (saved 2016-06-14, file H-项目计划v1.3.mpp)

Note of the change: Signed-off-by: libcanyoung <gaiyangfan@163.com>

Last finish 2016-06-06 → 2016-06-11 (+5d). Complete tasks 21 → 37.

Removed: 34 非结构化数据管理; 35 数据挖掘; 64 改进计划方案撰写; 65 总结报告

Changed:

| ID | Task | Start | Finish | Duration | Complete | Other |
| --- | --- | --- | --- | --- | --- | --- |
| 1 | **软件需求分析** |  |  |  |  | baseline start none → 2016-03-15; baseline finish none → 2016-03-23 |
| 2 | 开会确定目标及需求 |  |  |  |  | baseline start none → 2016-03-15; baseline finish none → 2016-03-16 |
| 3 | 资料收集 |  |  |  |  | baseline start none → 2016-03-17; baseline finish none → 2016-03-18 |
| 4 | 撰写需求说明书 |  |  |  |  | baseline start none → 2016-03-17; baseline finish none → 2016-03-17 |
| 5 | 讨论，总结及完善 |  |  |  |  | baseline start none → 2016-03-21; baseline finish none → 2016-03-23 |
| 6 | **软件需求评审** |  |  | 13d → 17d |  | baseline start none → 2016-03-21; baseline finish none → 2016-04-06 |
| 7 | 准备软件评审 |  |  |  |  | baseline start none → 2016-03-21; baseline finish none → 2016-03-23 |
| 8 | 参与评审 |  |  |  |  | baseline start none → 2016-03-24; baseline finish none → 2016-03-25 |
| 9 | 需求互评 |  |  |  |  | baseline start none → 2016-04-02; baseline finish none → 2016-04-05 |
| 10 | 撰写报告 |  |  |  |  | baseline start none → 2016-03-28; baseline finish none → 2016-03-29 |
| 11 | **软件需求复评审** |  |  |  |  | baseline start none → 2016-04-07; baseline finish none → 2016-04-15 |
| 12 | 开会讨论，根据评审进行改正 |  |  |  |  | resources 顾泽鹏; 刘宏宇; 滕延林; 杨帆 → 顾泽鹏; 刘宏宇; 滕延林; 杨帆; 周晓懿; baseline start none → 2016-04-07; baseline finish none → 2016-04-13 |
| 13 | 撰写报告 |  |  |  |  | baseline start none → 2016-04-14; baseline finish none → 2016-04-15 |
| 15 | **工作进度计划** |  |  |  |  | baseline start none → 2016-04-16; baseline finish none → 2016-04-17 |
| 16 | 进度检查与分析 |  |  |  |  | resources 滕延林; 杨帆; 刘宏宇 → 滕延林; baseline start none → 2016-04-16; baseline finish none → 2016-04-16 |
| 17 | 任务量统计 |  |  |  |  | baseline start none → 2016-04-16; baseline finish none → 2016-04-16 |
| 18 | 调整分析报告 |  |  |  |  | resources 刘宏宇; 杨帆 → 杨帆; 周晓懿; baseline start none → 2016-04-17; baseline finish none → 2016-04-17 |
| 20 | **改进设计方案** | 2016-04-17 → 2016-04-18 A (+1d) |  | 4d → 3d |  | baseline start none → 2016-04-18; baseline finish none → 2016-04-20 |
| 21 | 讨论并调整需求 | 2016-04-19 A → 2016-04-18 A (-1d) | 2016-04-19 A → 2016-04-18 A (-1d) |  |  | resources 刘宏宇; 杨帆 → 刘宏宇; 周晓懿; baseline start none → 2016-04-18; baseline finish none → 2016-04-18 |
| 22 | 方案设计 | 2016-04-20 A → 2016-04-19 A (-1d) | 2016-04-20 A → 2016-04-19 A (-1d) |  |  | resources 刘宏宇; 杨帆 → 杨帆; 刘宏宇; 周晓懿; baseline start none → 2016-04-19; baseline finish none → 2016-04-19 |
| 23 | ppt设计 |  |  |  |  | resources 刘宏宇 → 刘宏宇; 周晓懿; baseline start none → 2016-04-20; baseline finish none → 2016-04-20 |
| 24 | **基本框架搭建** |  |  |  |  | baseline start none → 2016-04-17; baseline finish none → 2016-04-20 |
| 25 | 代码阅读 |  |  |  |  | baseline start none → 2016-04-17; baseline finish none → 2016-04-17 |
| 26 | 文本输入 |  | 2016-04-18 A → 2016-04-19 A (+1d) | 1d → 1.5d |  | baseline start none → 2016-04-18; baseline finish none → 2016-04-19 |
| 27 | 文本检索 |  |  |  |  | baseline start none → 2016-04-19; baseline finish none → 2016-04-20 |
| 29 | **扩展功能实现** |  |  |  | 50% → 100% | baseline start none → 2016-04-21; baseline finish none → 2016-04-28 |
| 30 | 中文分词 |  |  |  |  | resources 顾泽鹏; 杨帆 → 顾泽鹏; 杨帆; 周晓懿; baseline start none → 2016-04-21; baseline finish none → 2016-04-24 |
| 31 | 图像检索 |  |  |  |  | baseline start none → 2016-04-21; baseline finish none → 2016-04-24 |
| 33 | **性能优化** | 2016-04-29 A |  |  | 0% → 100% | baseline start none → 2016-04-29; baseline finish none → 2016-05-05 |
| 34 | 讨论，确定具体实施方案 | 2016-04-29 A | 2016-05-01 → 2016-04-30 A (-1d) | 3d → 2d | 0% → 100% | resources 顾泽鹏; 滕延林; 杨帆; 刘宏宇 → 顾泽鹏; 滕延林; 杨帆; 刘宏宇; 周晓懿; baseline start none → 2016-04-29; baseline finish none → 2016-04-30 |
| 35 | 编码 | 2016-05-02 → 2016-05-01 A (-1d) | 2016-05-05 → 2016-05-02 A (-3d) | 4d → 2d | 0% → 100% | resources 顾泽鹏; 刘宏宇; 滕延林; 杨帆 → 顾泽鹏; 刘宏宇; 滕延林; 杨帆; 周晓懿; baseline start none → 2016-05-01; baseline finish none → 2016-05-02 |
| 37 | **软件测试分析** |  | 2016-05-12 A |  | 0% → 100% | baseline start none → 2016-05-06; baseline finish none → 2016-05-12 |
| 38 | 学习测试工具 | 2016-05-07 A | 2016-05-08 A |  | 0% → 100% | resources 顾泽鹏; 刘宏宇 → 顾泽鹏; 周晓懿; baseline start none → 2016-05-07; baseline finish none → 2016-05-08 |
| 39 | 测试需求分析 | 2016-05-10 → 2016-05-09 A (-1d) | 2016-05-10 → 2016-05-09 A (-1d) |  | 0% → 100% | resources 滕延林; 杨帆; 刘宏宇 → 滕延林; 周晓懿; baseline start none → 2016-05-09; baseline finish none → 2016-05-09 |
| 40 | 确定测试用例 | 2016-05-11 → 2016-05-10 A (-1d) | 2016-05-12 A | 2d → 3d | 0% → 100% | resources 顾泽鹏; 刘宏宇; 滕延林; 杨帆 → 顾泽鹏; 刘宏宇; 滕延林; 杨帆; 周晓懿; baseline start none → 2016-05-10; baseline finish none → 2016-05-12 |
| 42 | **软件测试复评审** | 2016-05-13 A | 2016-05-19 → 2016-05-20 A (+1d) | 7d → 8d | 0% → 100% | baseline start none → 2016-05-13; baseline finish none → 2016-05-20 |
| 43 | 参与评审 | 2016-05-13 A | 2016-05-13 → 2016-05-18 A (+5d) | 1d → 6d | 0% → 100% | resources 顾泽鹏; 刘宏宇; 滕延林; 杨帆 → 顾泽鹏; 刘宏宇; 滕延林; 杨帆; 周晓懿; baseline start none → 2016-05-13; baseline finish none → 2016-05-18 |
| 44 | 测试需求和测试用例评审 | 2016-05-16 → 2016-05-19 A (+3d) | 2016-05-17 → 2016-05-19 A (+2d) | 2d → 1d | 0% → 100% | resources 顾泽鹏; 刘宏宇; 滕延林; 杨帆 → 顾泽鹏; 刘宏宇; 滕延林; 杨帆; 周晓懿; baseline start none → 2016-05-19; baseline finish none → 2016-05-19 |
| 45 | 测试分析修改 | 2016-05-18 → 2016-05-20 A (+2d) | 2016-05-19 → 2016-05-20 A (+1d) | 2d → 1d | 0% → 100% | was named 测试结果分析与报告; resources 滕延林; 杨帆; 刘宏宇 → 滕延林; 杨帆; 刘宏宇; 顾泽鹏; 周晓懿; baseline start none → 2016-05-20; baseline finish none → 2016-05-20 |
| 47 | **软件测试** | 2016-05-19 → 2016-05-21 A (+2d) | 2016-05-25 → 2016-05-27 A (+2d) |  | 0% → 100% | was named 软件演示与测评; baseline start none → 2016-05-21; baseline finish none → 2016-05-27 |
| 48 | 基本功能测试 | 2016-05-20 → 2016-05-21 A (+1d) | 2016-05-21 → 2016-05-25 A (+4d) | 2d → 5d | 0% → 100% | was named 准备文档及ppt; resources 顾泽鹏 → 杨帆; 周晓懿; baseline start none → 2016-05-21; baseline finish none → 2016-05-25 |
| 49 | 扩展功能测试 | 2016-05-23 → 2016-05-21 A (-2d) | 2016-05-24 → 2016-05-25 A (+1d) | 2d → 5d | 0% → 100% | was named 软件终测; resources 刘宏宇 → 刘宏宇; 顾泽鹏; baseline start none → 2016-05-21; baseline finish none → 2016-05-25 |
| 50 | 性能优化测试 | 2016-05-24 → 2016-05-21 A (-3d) | 2016-05-24 → 2016-05-25 A (+1d) | 1d → 5d | 0% → 100% | was named 软件演示; baseline start none → 2016-05-21; baseline finish none → 2016-05-25 |
| 51 | 测试报告撰写 | 2016-05-25 → 2016-05-26 A (+1d) | 2016-05-25 → 2016-05-27 A (+2d) | 1d → 2d | 0% → 100% | was named 软件讲解; resources 杨帆; 刘宏宇 → 杨帆; 刘宏宇; 顾泽鹏; 滕延林; 周晓懿; baseline start none → 2016-05-26; baseline finish none → 2016-05-27 |
| 53 | **综合实验分析** | 2016-05-26 → 2016-05-28 A (+2d) | 2016-05-31 → 2016-06-02 (+2d) |  | 0% → 100% | baseline start none → 2016-05-28; baseline finish none → 2016-06-02 |
| 54 | 计划管理报告撰写 | 2016-05-26 → 2016-05-28 A (+2d) | 2016-05-28 → 2016-06-01 A (+4d) | 3d → 5d | 0% → 100% | was named 功能需求分析; resources 顾泽鹏; 刘宏宇 → 杨帆; 滕延林; 周晓懿; baseline start none → 2016-05-28; baseline finish none → 2016-06-01 |
| 55 | 配置管理报告撰写 | 2016-05-31 → 2016-05-28 A (-3d) | 2016-05-31 → 2016-06-01 A (+1d) | 1d → 5d | 0% → 100% | was named 完成文档; resources 滕延林; 杨帆 → 刘宏宇; 顾泽鹏; baseline start none → 2016-05-28; baseline finish none → 2016-06-01 |
| 57 | **综合实验总结** | 2016-06-01 → 2016-06-04 A (+3d) | 2016-06-06 → 2016-06-11 A (+5d) | 6d → 8d | 0% → 100% | baseline start none → 2016-06-04; baseline finish none → 2016-06-11 |
| 58 | 人员工作量统计 | 2016-06-01 → 2016-06-04 A (+3d) | 2016-06-01 → 2016-06-11 A (+10d) | 1d → 8d | 0% → 100% | was named 问题报告撰写; resources 顾泽鹏 → 滕延林; 杨帆; 周晓懿; baseline start none → 2016-06-04; baseline finish none → 2016-06-11 |
| 59 | 工作量统计分析 | 2016-06-02 → 2016-06-04 A (+2d) | 2016-06-02 → 2016-06-11 A (+9d) | 1d → 8d | 0% → 100% | was named 需求文档撰写; resources 刘宏宇 → 刘宏宇; 顾泽鹏; baseline start none → 2016-06-04; baseline finish none → 2016-06-11 |

## Version 4 (saved 2016-06-25, file H-项目计划v1.4.mpp)

Note of the change: Signed-off-by: libcanyoung <gaiyangfan@163.com>

Last finish stays 2016-06-11.

Changed:

| ID | Task | Finish | Duration | Other |
| --- | --- | --- | --- | --- |
| 12 | 开会讨论，根据评审进行改正 | 2016-04-13 A → 2016-04-10 A (-3d) | 7d → 4d |  |
| 25 | 代码阅读 | 2016-04-17 A → 2016-04-18 A (+1d) | 1d → 1.27d |  |
| 30 | 中文分词 | 2016-04-24 A → 2016-04-26 A (+2d) | 4d → 6d |  |
| 34 | 讨论，确定具体实施方案 |  |  | resources 顾泽鹏; 滕延林; 杨帆; 刘宏宇; 周晓懿 → 顾泽鹏; 滕延林; 刘宏宇 |
| 35 | 编码 | 2016-05-02 A → 2016-05-06 A (+4d) | 2d → 5.33d | resources 顾泽鹏; 刘宏宇; 滕延林; 杨帆; 周晓懿 → 顾泽鹏; 刘宏宇; 滕延林 |
| 43 | 参与评审 | 2016-05-18 A → 2016-05-13 A (-5d) | 6d → 1d |  |
| 47 | **软件测试** | 2016-05-27 A → 2016-05-27 |  |  |
| 48 | 基本功能测试 | 2016-05-25 A → 2016-05-23 A (-2d) | 5d → 3d |  |
| 49 | 扩展功能测试 | 2016-05-25 A → 2016-05-23 A (-2d) | 5d → 3d |  |
| 50 | 性能优化测试 | 2016-05-25 A → 2016-05-23 A (-2d) | 5d → 3d |  |
| 51 | 测试报告撰写 | 2016-05-27 A → 2016-05-26 A (-1d) | 2d → 1d |  |
| 54 | 计划管理报告撰写 | 2016-06-01 A → 2016-05-30 A (-2d) | 5d → 3d |  |
| 55 | 配置管理报告撰写 | 2016-06-01 A → 2016-05-30 A (-2d) | 5d → 3d |  |
| 57 | **综合实验总结** | 2016-06-11 A → 2016-06-11 |  |  |
| 58 | 人员工作量统计 | 2016-06-11 A → 2016-06-05 A (-6d) | 8d → 2d |  |
| 59 | 工作量统计分析 | 2016-06-11 A → 2016-06-05 A (-6d) | 8d → 2d |  |
